# sss

How a schedule from MS Project changed from version to version. A marks actual dates.

## Version 1 (saved 2011-08-16, file JH_T-BPM_20110816_开发阶段计划_V1.0.mpp)

| ID | WBS | Task | Duration | Start | Finish | Predecessors | Total float | Constraint |
| --- | --- | --- | --- | --- | --- | --- | --- | --- |
| 1 |  | 开发启动 | 0d | 2011-08-23 | 2011-08-23 |  | 0d | start no earlier than 2011-08-23 |
| 2 | 2 | **T-BPM阶段开发** | 20d | 2011-08-23 | 2011-09-20 |  | 0d |  |
| 3 | 2.1 | **基础开发** | 20d | 2011-08-23 | 2011-09-20 |  | 0d |  |
| 4 |  | 组织模型 | 3d | 2011-08-23 | 2011-08-25 | 1 | 13d | start no earlier than 2011-08-22 |
| 5 | 2.1.2 | **用户同步** | 3d | 2011-08-23 | 2011-08-25 |  | 0d |  |
| 6 |  | SSO | 1d | 2011-08-23 | 2011-08-23 | 1 | 23d | start no earlier than 2011-08-22 |
| 7 |  | 职位,TBPM角色匹配关系维护 | 1d | 2011-08-23 | 2011-08-23 | 1 | 0d | start no earlier than 2011-08-22 |
| 8 |  | 用户同步 | 2d | 2011-08-24 | 2011-08-25 | 7 | 0d |  |
| 9 | 2.1.3 | **公用组件** | 18d | 2011-08-23 | 2011-09-16 |  | 0d |  |
| 10 |  | 取下一环节处理人 | 3d | 2011-08-23 | 2011-08-25 | 1 | 0d | start no earlier than 2011-08-22 |
| 11 |  | 授权体系 | 2d | 2011-08-26 | 2011-08-29 | 10 | 0d | start no earlier than 2011-08-22 |
| 12 |  | 文件上传下载 | 2d | 2011-08-30 | 2011-08-31 | 11 | 0d |  |
| 13 |  | SAP接口封装 | 3d | 2011-09-01 | 2011-09-05 | 12 | 0d |  |
| 14 |  | 超时处理 | 3d | 2011-09-06 | 2011-09-08 | 13 | 0d |  |
| 15 |  | 菜单管理 | 0d | 2011-09-08 | 2011-09-08 | 14 | 0d |  |
| 16 |  | 参数配置管理 | 2d | 2011-09-09 | 2011-09-13 | 15 | 0d | start no earlier than 2011-08-22 |
| 17 |  | 权限委托 | 2d | 2011-09-14 | 2011-09-15 | 16 | 0d | start no earlier than 2011-08-22 |
| 18 |  | INBOX定制 | 3d | 2011-08-24 | 2011-08-26 | 6 | 16d |  |
| 19 | 2.1.3.10 | **系统日志管理** | 18d | 2011-08-23 | 2011-09-16 |  | 0d |  |
| 20 |  | LOG记录 | 1d | 2011-08-23 | 2011-08-23 | 1 | 0d | start no earlier than 2011-08-22 |
| 21 |  | LOG管理查询界面 | 1d | 2011-09-16 | 2011-09-16 | 17 | 0d |  |
| 22 | 2.1.4 | **SAP基础数据管理** | 17d | 2011-08-26 | 2011-09-20 |  | 0d |  |
| 23 |  | SAP字典管理 | 2d | 2011-09-19 | 2011-09-20 | 21 | 0d |  |
| 24 |  | CACHE机制 | 1d | 2011-08-26 | 2011-08-26 | 8 | 0d |  |
| 25 | 2.1.5 | **系统参数初始化** | 11d | 2011-08-26 | 2011-09-09 |  | 6d |  |
| 26 |  | 业务字典信息初始化 | 3d | 2011-08-26 | 2011-08-30 | 4 | 6d |  |
| 27 |  | 来伊份职位,TBPM角色匹配关系初始化 | 5d | 2011-08-31 | 2011-09-06 | 26 | 6d |  |
| 28 |  | 功能角色初始化 | 3d | 2011-09-07 | 2011-09-09 | 27 | 6d |  |
| 29 | 2.2 | **开店业务流程开发** | 20d | 2011-08-23 | 2011-09-20 |  | 0d |  |
| 30 | 2.2.1 | **网点年度规划** | 4d | 2011-08-23 | 2011-08-26 |  | 0d |  |
| 31 |  | 网点年度规划管理 | 3d | 2011-08-23 | 2011-08-25 | 1 | 0d | start no earlier than 2011-08-22 |
| 32 |  | 网点年度规划汇总查询 | 1d | 2011-08-26 | 2011-08-26 | 31 | 0d |  |
| 33 | 2.2.2 | **网点年度开发计划** | 4d | 2011-08-23 | 2011-08-26 |  | 0d |  |
| 34 |  | 网点开发计划流程 | 1d | 2011-08-23 | 2011-08-23 | 1 | 0d | start no earlier than 2011-08-22 |
| 35 |  | 网点开发计划管理 | 2d | 2011-08-24 | 2011-08-25 | 34 | 0d | start no earlier than 2011-08-19 |
| 36 |  | 网点开发计划查询 | 1d | 2011-08-26 | 2011-08-26 | 35 | 0d |  |
| 37 | 2.2.3 | **标准新店选址与发布** | 14d | 2011-08-24 | 2011-09-13 |  | 0d |  |
| 38 | 2.2.3.1 | **商超信息移交单** | 4d | 2011-08-26 | 2011-08-31 |  | 0d |  |
| 39 |  | 商超信息移交单流程 | 1d | 2011-08-26 | 2011-08-26 | 1SS+3d | 0d | start no earlier than 2011-08-25 |
| 40 |  | 商超信息移交单管理 | 2d | 2011-08-29 | 2011-08-30 | 39 | 0d | start no earlier than 2011-08-19 |
| 41 |  | 商超信息移交单查询 | 1d | 2011-08-31 | 2011-08-31 | 40 | 0d |  |
| 42 | 2.2.3.2 | **目标调查表** | 9d | 2011-08-24 | 2011-09-05 |  | 0d |  |
| 43 |  | 目标调查表流程 | 2d | 2011-08-24 | 2011-08-25 | 20 | 0d |  |
| 44 |  | 目标调查表管理(一般店) | 4d | 2011-08-26 | 2011-08-31 | 43 | 0d |  |
| 45 |  | 目标调查表管理(商超) | 2d | 2011-09-01 | 2011-09-02 | 44 | 0d |  |
| 46 |  | 目标调查表查询 | 1d | 2011-09-05 | 2011-09-05 | 45 | 0d |  |
| 47 | 2.2.3.3 | **合同用印** | 5d | 2011-08-29 | 2011-09-02 |  | 0d |  |
| 48 |  | 合同用印流程 | 1d | 2011-08-29 | 2011-08-29 | 36 | 0d |  |
| 49 |  | 合同用印流程表单 | 3d | 2011-08-30 | 2011-09-01 | 48 | 0d |  |
| 50 |  | 合同用印查询 | 1d | 2011-09-02 | 2011-09-02 | 49 | 0d |  |
| 51 | 2.2.3.4 | **新店信息移交** | 11d | 2011-08-29 | 2011-09-13 |  | 0d |  |
| 52 |  | 新店信息移交流程 | 2d | 2011-08-29 | 2011-08-30 | 24 | 0d |  |
| 53 |  | 新店信息移交管理(一般) | 4d | 2011-08-31 | 2011-09-05 | 52 | 0d |  |
| 54 |  | 新店信息移交管理(商超) | 2d | 2011-09-06 | 2011-09-07 | 53 | 0d |  |
| 55 |  | 新店信息移交查询 | 1d | 2011-09-08 | 2011-09-08 | 54 | 0d |  |
| 56 |  | 供应商主数据新增(SAP) | 2d | 2011-09-09 | 2011-09-13 | 55 | 0d |  |
| 57 | 2.2.4 | **标准新开店** | 16d | 2011-08-29 | 2011-09-20 |  | 0d |  |
| 58 | 2.2.4.1 | **装修设计** | 4d | 2011-09-05 | 2011-09-08 |  | 0d |  |
| 59 |  | 装修设计审核流程 | 1d | 2011-09-05 | 2011-09-05 | 50 | 0d |  |
| 60 |  | 装修设计查询 | 2d | 2011-09-06 | 2011-09-07 | 59 | 0d |  |
| 61 |  | 装修设计管理 | 1d | 2011-09-08 | 2011-09-08 | 60 | 0d |  |
| 62 | 2.2.4.2 | **物料配送审核** | 5d | 2011-09-14 | 2011-09-20 |  | 0d |  |
| 63 |  | 物流配送审核流程 | 1d | 2011-09-14 | 2011-09-14 | 56 | 0d |  |
| 64 |  | 物料配送查询 | 1d | 2011-09-15 | 2011-09-15 | 63 | 0d |  |
| 65 |  | 基础物料配置 | 1d | 2011-09-16 | 2011-09-16 | 64 | 0d |  |
| 66 |  | 物料配送管理 | 2d | 2011-09-19 | 2011-09-20 | 65 | 0d |  |
| 67 | 2.2.4.3 | **物料状态** | 4d | 2011-09-09 | 2011-09-15 |  | 0d |  |
| 68 |  | 物料状态流程 | 1d | 2011-09-09 | 2011-09-09 | 61 | 0d |  |
| 69 |  | 物料状态表单 | 2d | 2011-09-13 | 2011-09-14 | 68 | 0d |  |
| 70 |  | 物料状态查询 | 1d | 2011-09-15 | 2011-09-15 | 69 | 0d |  |

| ID | WBS | Task | Duration | Start | Finish | Predecessors | Total float |
| --- | --- | --- | --- | --- | --- | --- | --- |
| 71 | 2.2.4.4 | **商品预置键** | 3d | 2011-09-16 | 2011-09-20 |  | 0d |
| 72 |  | 商品预置键表单&流程 | 2d | 2011-09-16 | 2011-09-19 | 70 | 0d |
| 73 |  | 商品预置键查询 | 1d | 2011-09-20 | 2011-09-20 | 72 | 0d |
| 74 | 2.2.4.5 | **促销规则** | 3d | 2011-09-06 | 2011-09-08 |  | 0d |
| 75 |  | 促销规则管理 | 2d | 2011-09-06 | 2011-09-07 | 46 | 0d |
| 76 |  | 促销规则查询 | 1d | 2011-09-08 | 2011-09-08 | 75 | 0d |
| 77 | 2.2.4.6 | **装修执行子流程** | 13d | 2011-09-01 | 2011-09-20 |  | 0d |
| 78 |  | 装修执行流程 | 1d | 2011-09-01 | 2011-09-01 | 41 | 0d |
| 79 |  | 证照表单 | 2d | 2011-09-02 | 2011-09-05 | 78 | 0d |
| 80 |  | ADSL安装单表单 | 1d | 2011-09-06 | 2011-09-06 | 79 | 0d |
| 81 |  | POS机移交确认单表单 | 1d | 2011-09-07 | 2011-09-07 | 80 | 0d |
| 82 |  | 海信设备安装表单 | 1d | 2011-09-08 | 2011-09-08 | 81 | 0d |
| 83 |  | 子公司营运部数据表单 | 2d | 2011-09-09 | 2011-09-13 | 82 | 0d |
| 84 |  | 子公司工程部表单 | 2d | 2011-09-14 | 2011-09-15 | 83 | 0d |
| 85 |  | 运输部主数据表单 | 1d | 2011-09-16 | 2011-09-16 | 84 | 0d |
| 86 |  | 门店主数据(财务)表单 | 1d | 2011-09-19 | 2011-09-19 | 85 | 0d |
| 87 |  | 主数据人事表单 | 1d | 2011-09-20 | 2011-09-20 | 86 | 0d |
| 88 | 2.2.4.7 | **门店主数据** | 12d | 2011-08-29 | 2011-09-14 |  | 0d |
| 89 |  | 门店主数据管理流程 | 2d | 2011-08-29 | 2011-08-30 | 32 | 0d |
| 90 |  | 门店主数据新增 | 5d | 2011-09-07 | 2011-09-14 | 91 | 0d |
| 91 |  | 海信系统集成 | 2d | 2011-09-05 | 2011-09-06 | 96 | 0d |
| 92 |  | 流程集成 | 3d | 2011-09-16 | 2011-09-20 | 94 | 0d |
| 93 | 2.2.6 | **BAM** | 14d | 2011-08-31 | 2011-09-20 |  | 0d |
| 94 |  | 图形化事件配置 | 4d | 2011-09-09 | 2011-09-15 | 76 | 0d |
| 95 | 2.2.6.2 | **BAM监控展示** | 14d | 2011-08-31 | 2011-09-20 |  | 0d |
| 96 |  | 业务营运监控 | 3d | 2011-08-31 | 2011-09-02 | 89 | 0d |
| 97 |  | 业务执行监控 | 3d | 2011-09-15 | 2011-09-19 | 90 | 0d |
| 98 |  | 业务操作监控 | 1d | 2011-09-20 | 2011-09-20 | 97 | 0d |

## Version 2 (saved 2011-08-25, file JH_T-BPM_20110825_开发阶段计划_V1.1.mpp)

Last finish stays 2011-09-20. Complete tasks 0 → 5.

Changed:

| ID | Task | Start | Finish | Duration | Complete | Total float | Predecessors | Other |
| --- | --- | --- | --- | --- | --- | --- | --- | --- |
| 1 | 开发启动 | 2011-08-23 → 2011-08-23 00:00 A | 2011-08-23 → 2011-08-23 00:00 | 0d → 0h |  | 0d → 0.95d |  | constraint start no earlier than 2011-08-23 → start no earlier than 2011-08-23 00:00; baseline start none → 2011-08-23 08:00; baseline finish none → 2011-08-23 08:00 |
| 2 | **T-BPM阶段开发** | 2011-08-23 → 2011-08-23 08:00 A | 2011-09-20 → 2011-09-20 17:00 | 20d → 21d | 0% → 11% |  |  | baseline start none → 2011-08-23 08:00; baseline finish none → 2011-09-20 17:00 |
| 3 | **基础开发** | 2011-08-23 → 2011-08-23 08:00 A | 2011-09-20 → 2011-09-20 17:00 | 20d → 21d | 0% → 20% |  |  | baseline start none → 2011-08-23 08:00; baseline finish none → 2011-09-20 17:00 |
| 4 | 组织模型 | 2011-08-23 → 2011-08-23 08:00 A | 2011-08-25 → 2011-08-25 17:00 | 3d → 24h | 0% → 50% | 13d → 0d |  | constraint start no earlier than 2011-08-22 → start no earlier than 2011-08-22 08:00; baseline start none → 2011-08-23 08:00; baseline finish none → 2011-08-25 17:00 |
| 5 | **用户同步** | 2011-08-23 → 2011-08-23 08:00 A | 2011-08-25 → 2011-08-25 17:00 A |  | 0% → 100% | 0d → none |  | baseline start none → 2011-08-23 08:00; baseline finish none → 2011-08-25 17:00 |
| 6 | SSO | 2011-08-23 → 2011-08-23 08:00 A | 2011-08-23 → 2011-08-23 17:00 A | 1d → 8h | 0% → 100% | 23d → none |  | constraint start no earlier than 2011-08-22 → start no earlier than 2011-08-22 08:00; resources 马波 → none; baseline start none → 2011-08-23 08:00; baseline finish none → 2011-08-23 17:00 |
| 7 | 职位,TBPM角色匹配关系维护 | 2011-08-23 → 2011-08-23 08:00 A | 2011-08-23 → 2011-08-23 17:00 A | 1d → 8h | 0% → 100% | 0d → none |  | constraint start no earlier than 2011-08-22 → start no earlier than 2011-08-22 08:00; baseline start none → 2011-08-23 08:00; baseline finish none → 2011-08-23 17:00 |
| 8 | 用户同步 | 2011-08-24 → 2011-08-24 08:00 A | 2011-08-25 → 2011-08-25 17:00 A | 2d → 16h | 0% → 100% | 0d → none |  | baseline start none → 2011-08-24 08:00; baseline finish none → 2011-08-25 17:00 |
| 9 | **公用组件** | 2011-08-23 → 2011-08-23 08:00 A | 2011-09-16 → 2011-09-16 17:00 | 18d → 19d | 0% → 15% | 0d → 2d |  | baseline start none → 2011-08-23 08:00; baseline finish none → 2011-09-16 17:00 |
| 10 | 取下一环节处理人 | 2011-08-23 → 2011-08-23 08:00 A | 2011-08-25 → 2011-08-25 17:00 A | 3d → 24h | 0% → 100% | 0d → none |  | constraint start no earlier than 2011-08-22 → start no earlier than 2011-08-22 08:00; baseline start none → 2011-08-23 08:00; baseline finish none → 2011-08-25 17:00 |
| 11 | 授权体系 | 2011-08-26 → 2011-08-26 08:00 A | 2011-08-29 → 2011-08-29 17:00 | 2d → 16h |  |  |  | constraint start no earlier than 2011-08-22 → start no earlier than 2011-08-22 08:00; baseline start none → 2011-08-26 08:00; baseline finish none → 2011-08-29 17:00 |
| 12 | 文件上传下载 | 2011-08-30 → 2011-08-30 08:00 A | 2011-08-31 → 2011-08-31 17:00 | 2d → 16h |  |  |  | baseline start none → 2011-08-30 08:00; baseline finish none → 2011-08-31 17:00 |
| 13 | SAP接口封装 | 2011-09-01 → 2011-09-01 08:00 A | 2011-09-05 → 2011-09-05 17:00 | 3d → 24h |  |  |  | baseline start none → 2011-09-01 08:00; baseline finish none → 2011-09-05 17:00 |
| 14 | 超时处理 | 2011-09-06 → 2011-09-06 08:00 A | 2011-09-08 → 2011-09-08 17:00 | 3d → 24h |  |  |  | baseline start none → 2011-09-06 08:00; baseline finish none → 2011-09-08 17:00 |
| 15 | 菜单管理 | 2011-09-08 → 2011-09-09 08:00 A (+1d) | 2011-09-08 → 2011-09-09 08:00 (+1d) | 0d → 0h |  |  |  | baseline start none → 2011-09-09 08:00; baseline finish none → 2011-09-09 08:00 |
| 16 | 参数配置管理 | 2011-09-09 → 2011-09-09 08:00 A | 2011-09-13 → 2011-09-12 17:00 (-1d) | 2d → 16h |  | 0d → 1d |  | constraint start no earlier than 2011-08-22 → start no earlier than 2011-08-22 08:00; baseline start none → 2011-09-09 08:00; baseline finish none → 2011-09-12 17:00 |
| 17 | 权限委托 | 2011-09-14 → 2011-09-14 08:00 A | 2011-09-15 → 2011-09-15 17:00 | 2d → 16h |  |  |  | constraint start no earlier than 2011-08-22 → start no earlier than 2011-08-22 08:00; baseline start none → 2011-09-14 08:00; baseline finish none → 2011-09-15 17:00 |
| 18 | INBOX定制 | 2011-08-24 → 2011-08-24 08:00 A | 2011-08-26 → 2011-08-26 17:00 | 3d → 24h |  | 16d → 17d |  | baseline start none → 2011-08-24 08:00; baseline finish none → 2011-08-26 17:00 |
| 19 | **系统日志管理** | 2011-08-23 → 2011-08-23 08:00 A | 2011-09-16 → 2011-09-16 17:00 | 18d → 19d | 0% → 10% |  |  | baseline start none → 2011-08-23 08:00; baseline finish none → 2011-09-16 17:00 |
| 20 | LOG记录 | 2011-08-23 → 2011-08-23 08:00 A | 2011-08-23 → 2011-08-23 17:00 | 1d → 8h | 0% → 20% | 0d → 1d |  | constraint start no earlier than 2011-08-22 → start no earlier than 2011-08-22 08:00; baseline start none → 2011-08-23 08:00; baseline finish none → 2011-08-23 17:00 |
| 21 | LOG管理查询界面 | 2011-09-16 → 2011-09-16 08:00 A | 2011-09-16 → 2011-09-16 17:00 | 1d → 8h |  |  |  | baseline start none → 2011-09-16 08:00; baseline finish none → 2011-09-16 17:00 |
| 22 | **SAP基础数据管理** | 2011-08-26 → 2011-08-26 08:00 A | 2011-09-20 → 2011-09-20 17:00 | 17d → 18d |  |  |  | baseline start none → 2011-08-26 08:00; baseline finish none → 2011-09-20 17:00 |
| 23 | SAP字典管理 | 2011-09-19 → 2011-09-19 08:00 A | 2011-09-20 → 2011-09-20 17:00 | 2d → 16h |  |  |  | baseline start none → 2011-09-19 08:00; baseline finish none → 2011-09-20 17:00 |
| 24 | CACHE机制 | 2011-08-26 → 2011-08-26 08:00 A | 2011-08-26 → 2011-08-26 17:00 | 1d → 8h |  |  |  | baseline start none → 2011-08-26 08:00; baseline finish none → 2011-08-26 17:00 |
| 25 | **系统参数初始化** | 2011-08-26 → 2011-08-26 08:00 A | 2011-09-09 → 2011-09-09 17:00 |  |  | 6d → 7d |  | baseline start none → 2011-08-26 08:00; baseline finish none → 2011-09-09 17:00 |
| 26 | 业务字典信息初始化 | 2011-08-26 → 2011-08-26 08:00 A | 2011-08-30 → 2011-08-30 17:00 | 3d → 24h |  | 6d → 0d |  | baseline start none → 2011-08-26 08:00; baseline finish none → 2011-08-30 17:00 |
| 27 | 来伊份职位,TBPM角色匹配关系初始化 | 2011-08-31 → 2011-08-31 08:00 A | 2011-09-06 → 2011-09-06 17:00 | 5d → 40h |  | 6d → 0d |  | baseline start none → 2011-08-31 08:00; baseline finish none → 2011-09-06 17:00 |
| 28 | 功能角色初始化 | 2011-09-07 → 2011-09-07 08:00 A | 2011-09-09 → 2011-09-09 17:00 | 3d → 24h |  | 6d → 7d |  | baseline start none → 2011-09-07 08:00; baseline finish none → 2011-09-09 17:00 |
| 29 | **开店业务流程开发** | 2011-08-23 → 2011-08-23 08:00 A | 2011-09-20 → 2011-09-20 17:00 | 20d → 21d | 0% → 6% |  |  | baseline start none → 2011-08-23 08:00; baseline finish none → 2011-09-20 17:00 |
| 30 | **网点年度规划** | 2011-08-23 → 2011-08-23 08:00 A | 2011-08-26 → 2011-08-26 17:00 |  | 0% → 85% |  |  | baseline start none → 2011-08-23 08:00; baseline finish none → 2011-08-26 17:00 |
| 31 | 网点年度规划管理 | 2011-08-23 → 2011-08-23 08:00 A | 2011-08-25 → 2011-08-25 17:00 | 3d → 24h | 0% → 80% | 0d → 1d |  | constraint start no earlier than 2011-08-22 → start no earlier than 2011-08-22 08:00; baseline start none → 2011-08-23 08:00; baseline finish none → 2011-08-25 17:00 |
| 32 | 网点年度规划汇总查询 | 2011-08-26 → 2011-08-26 08:00 A | 2011-08-26 → 2011-08-26 17:00 A | 1d → 8h | 0% → 100% | 0d → none |  | baseline start none → 2011-08-26 08:00; baseline finish none → 2011-08-26 17:00 |
| 33 | **网点年度开发计划** | 2011-08-23 → 2011-08-23 08:00 A | 2011-08-26 → 2011-08-26 17:00 |  | 0% → 24% |  |  | baseline start none → 2011-08-23 08:00; baseline finish none → 2011-08-26 17:00 |
| 34 | 网点开发计划流程 | 2011-08-23 → 2011-08-23 08:00 A | 2011-08-23 → 2011-08-23 17:00 | 1d → 8h | 0% → 95% |  |  | constraint start no earlier than 2011-08-22 → start no earlier than 2011-08-22 08:00; baseline start none → 2011-08-23 08:00; baseline finish none → 2011-08-23 17:00 |
| 35 | 网点开发计划管理 | 2011-08-24 → 2011-08-24 08:00 A | 2011-08-25 → 2011-08-25 17:00 | 2d → 16h |  |  |  | constraint start no earlier than 2011-08-19 → start no earlier than 2011-08-19 08:00; baseline start none → 2011-08-24 08:00; baseline finish none → 2011-08-25 17:00 |
| 36 | 网点开发计划查询 | 2011-08-26 → 2011-08-26 08:00 A | 2011-08-26 → 2011-08-26 17:00 | 1d → 8h |  |  |  | baseline start none → 2011-08-26 08:00; baseline finish none → 2011-08-26 17:00 |
| 37 | **标准新店选址与发布** | 2011-08-24 → 2011-08-24 08:00 A | 2011-09-13 → 2011-09-12 17:00 (-1d) |  | 0% → 6% | 0d → 1d |  | baseline start none → 2011-08-24 08:00; baseline finish none → 2011-09-12 17:00 |
| 38 | **商超信息移交单** | 2011-08-26 → 2011-08-26 08:00 A | 2011-08-31 → 2011-08-31 17:00 |  | 0% → 15% |  |  | baseline start none → 2011-08-26 08:00; baseline finish none → 2011-08-31 17:00 |
| 39 | 商超信息移交单流程 | 2011-08-26 → 2011-08-26 08:00 A | 2011-08-26 → 2011-08-26 17:00 | 1d → 8h | 0% → 60% |  | 1SS+3d → 1SS+24h | constraint start no earlier than 2011-08-25 → start no earlier than 2011-08-25 08:00; baseline start none → 2011-08-26 08:00; baseline finish none → 2011-08-26 17:00 |
| 40 | 商超信息移交单管理 | 2011-08-29 → 2011-08-29 08:00 A | 2011-08-30 → 2011-08-30 17:00 | 2d → 16h |  |  |  | constraint start no earlier than 2011-08-19 → start no earlier than 2011-08-19 08:00; baseline start none → 2011-08-29 08:00; baseline finish none → 2011-08-30 17:00 |
| 41 | 商超信息移交单查询 | 2011-08-31 → 2011-08-31 08:00 A | 2011-08-31 → 2011-08-31 17:00 | 1d → 8h |  |  |  | baseline start none → 2011-08-31 08:00; baseline finish none → 2011-08-31 17:00 |
| 42 | **目标调查表** | 2011-08-24 → 2011-08-24 08:00 A | 2011-09-05 → 2011-09-05 17:00 |  | 0% → 11% |  |  | baseline start none → 2011-08-24 08:00; baseline finish none → 2011-09-05 17:00 |
| 43 | 目标调查表流程 | 2011-08-24 → 2011-08-24 08:00 A | 2011-08-25 → 2011-08-25 17:00 | 2d → 16h | 0% → 50% |  |  | baseline start none → 2011-08-24 08:00; baseline finish none → 2011-08-25 17:00 |
| 44 | 目标调查表管理(一般店) | 2011-08-26 → 2011-08-26 08:00 A | 2011-08-31 → 2011-08-31 17:00 | 4d → 32h |  |  |  | baseline start none → 2011-08-26 08:00; baseline finish none → 2011-08-31 17:00 |
| 45 | 目标调查表管理(商超) | 2011-09-01 → 2011-09-01 08:00 A | 2011-09-02 → 2011-09-02 17:00 | 2d → 16h |  |  |  | baseline start none → 2011-09-01 08:00; baseline finish none → 2011-09-02 17:00 |
| 46 | 目标调查表查询 | 2011-09-05 → 2011-09-05 08:00 A | 2011-09-05 → 2011-09-05 17:00 | 1d → 8h |  |  |  | baseline start none → 2011-09-05 08:00; baseline finish none → 2011-09-05 17:00 |
| 47 | **合同用印** | 2011-08-29 → 2011-08-29 08:00 A | 2011-09-02 → 2011-09-02 17:00 |  |  |  |  | baseline start none → 2011-08-29 08:00; baseline finish none → 2011-09-02 17:00 |
| 48 | 合同用印流程 | 2011-08-29 → 2011-08-29 08:00 A | 2011-08-29 → 2011-08-29 17:00 | 1d → 8h |  |  |  | baseline start none → 2011-08-29 08:00; baseline finish none → 2011-08-29 17:00 |
| 49 | 合同用印流程表单 | 2011-08-30 → 2011-08-30 08:00 A | 2011-09-01 → 2011-09-01 17:00 | 3d → 24h |  |  |  | baseline start none → 2011-08-30 08:00; baseline finish none → 2011-09-01 17:00 |
| 50 | 合同用印查询 | 2011-09-02 → 2011-09-02 08:00 A | 2011-09-02 → 2011-09-02 17:00 | 1d → 8h |  |  |  | baseline start none → 2011-09-02 08:00; baseline finish none → 2011-09-02 17:00 |
| 51 | **新店信息移交** | 2011-08-29 → 2011-08-29 08:00 A | 2011-09-13 → 2011-09-12 17:00 (-1d) |  |  | 0d → 1d |  | baseline start none → 2011-08-29 08:00; baseline finish none → 2011-09-12 17:00 |
| 52 | 新店信息移交流程 | 2011-08-29 → 2011-08-29 08:00 A | 2011-08-30 → 2011-08-30 17:00 | 2d → 16h |  |  |  | baseline start none → 2011-08-29 08:00; baseline finish none → 2011-08-30 17:00 |
| 53 | 新店信息移交管理(一般) | 2011-08-31 → 2011-08-31 08:00 A | 2011-09-05 → 2011-09-05 17:00 | 4d → 32h |  |  |  | baseline start none → 2011-08-31 08:00; baseline finish none → 2011-09-05 17:00 |
| 54 | 新店信息移交管理(商超) | 2011-09-06 → 2011-09-06 08:00 A | 2011-09-07 → 2011-09-07 17:00 | 2d → 16h |  |  |  | baseline start none → 2011-09-06 08:00; baseline finish none → 2011-09-07 17:00 |
| 55 | 新店信息移交查询 | 2011-09-08 → 2011-09-08 08:00 A | 2011-09-08 → 2011-09-08 17:00 | 1d → 8h |  |  |  | baseline start none → 2011-09-08 08:00; baseline finish none → 2011-09-08 17:00 |
| 56 | 供应商主数据新增(SAP) | 2011-09-09 → 2011-09-09 08:00 A | 2011-09-13 → 2011-09-12 17:00 (-1d) | 2d → 16h |  | 0d → 1d |  | baseline start none → 2011-09-09 08:00; baseline finish none → 2011-09-12 17:00 |
| 57 | **标准新开店** | 2011-08-29 → 2011-08-29 08:00 A | 2011-09-20 → 2011-09-20 17:00 | 16d → 17d |  |  |  | baseline start none → 2011-08-29 08:00; baseline finish none → 2011-09-20 17:00 |
| 58 | **装修设计** | 2011-09-05 → 2011-09-05 08:00 A | 2011-09-08 → 2011-09-08 17:00 |  |  |  |  | baseline start none → 2011-09-05 08:00; baseline finish none → 2011-09-08 17:00 |
| 59 | 装修设计审核流程 | 2011-09-05 → 2011-09-05 08:00 A | 2011-09-05 → 2011-09-05 17:00 | 1d → 8h |  |  |  | baseline start none → 2011-09-05 08:00; baseline finish none → 2011-09-05 17:00 |
| 60 | 装修设计查询 | 2011-09-06 → 2011-09-06 08:00 A | 2011-09-07 → 2011-09-07 17:00 | 2d → 16h |  |  |  | baseline start none → 2011-09-06 08:00; baseline finish none → 2011-09-07 17:00 |
| 61 | 装修设计管理 | 2011-09-08 → 2011-09-08 08:00 A | 2011-09-08 → 2011-09-08 17:00 | 1d → 8h |  |  |  | baseline start none → 2011-09-08 08:00; baseline finish none → 2011-09-08 17:00 |
| 62 | **物料配送审核** | 2011-09-14 → 2011-09-14 08:00 A | 2011-09-20 → 2011-09-20 17:00 |  |  |  |  | baseline start none → 2011-09-14 08:00; baseline finish none → 2011-09-20 17:00 |
| 63 | 物流配送审核流程 | 2011-09-14 → 2011-09-14 08:00 A | 2011-09-14 → 2011-09-14 17:00 | 1d → 8h |  |  |  | baseline start none → 2011-09-14 08:00; baseline finish none → 2011-09-14 17:00 |
| 64 | 物料配送查询 | 2011-09-15 → 2011-09-15 08:00 A | 2011-09-15 → 2011-09-15 17:00 | 1d → 8h |  |  |  | baseline start none → 2011-09-15 08:00; baseline finish none → 2011-09-15 17:00 |
| 65 | 基础物料配置 | 2011-09-16 → 2011-09-16 08:00 A | 2011-09-16 → 2011-09-16 17:00 | 1d → 8h |  |  |  | baseline start none → 2011-09-16 08:00; baseline finish none → 2011-09-16 17:00 |
| 66 | 物料配送管理 | 2011-09-19 → 2011-09-19 08:00 A | 2011-09-20 → 2011-09-20 17:00 | 2d → 16h |  |  |  | baseline start none → 2011-09-19 08:00; baseline finish none → 2011-09-20 17:00 |
| 67 | **物料状态** | 2011-09-09 → 2011-09-09 08:00 A | 2011-09-15 → 2011-09-15 17:00 | 4d → 5d |  |  |  | baseline start none → 2011-09-09 08:00; baseline finish none → 2011-09-15 17:00 |
| 68 | 物料状态流程 | 2011-09-09 → 2011-09-09 08:00 A | 2011-09-09 → 2011-09-09 17:00 | 1d → 8h |  | 0d → 1d |  | baseline start none → 2011-09-09 08:00; baseline finish none → 2011-09-09 17:00 |
| 69 | 物料状态表单 | 2011-09-13 → 2011-09-13 08:00 A | 2011-09-14 → 2011-09-14 17:00 | 2d → 16h |  |  |  | baseline start none → 2011-09-13 08:00; baseline finish none → 2011-09-14 17:00 |
| 70 | 物料状态查询 | 2011-09-15 → 2011-09-15 08:00 A | 2011-09-15 → 2011-09-15 17:00 | 1d → 8h |  |  |  | baseline start none → 2011-09-15 08:00; baseline finish none → 2011-09-15 17:00 |

| ID | Task | Start | Finish | Duration | Total float | Other |
| --- | --- | --- | --- | --- | --- | --- |
| 71 | **商品预置键** | 2011-09-16 → 2011-09-16 08:00 A | 2011-09-20 → 2011-09-20 17:00 |  |  | baseline start none → 2011-09-16 08:00; baseline finish none → 2011-09-20 17:00 |
| 72 | 商品预置键表单&流程 | 2011-09-16 → 2011-09-16 08:00 A | 2011-09-19 → 2011-09-19 17:00 | 2d → 16h |  | baseline start none → 2011-09-16 08:00; baseline finish none → 2011-09-19 17:00 |
| 73 | 商品预置键查询 | 2011-09-20 → 2011-09-20 08:00 A | 2011-09-20 → 2011-09-20 17:00 | 1d → 8h |  | baseline start none → 2011-09-20 08:00; baseline finish none → 2011-09-20 17:00 |
| 74 | **促销规则** | 2011-09-06 → 2011-09-06 08:00 A | 2011-09-08 → 2011-09-08 17:00 |  |  | baseline start none → 2011-09-06 08:00; baseline finish none → 2011-09-08 17:00 |
| 75 | 促销规则管理 | 2011-09-06 → 2011-09-06 08:00 A | 2011-09-07 → 2011-09-07 17:00 | 2d → 16h |  | baseline start none → 2011-09-06 08:00; baseline finish none → 2011-09-07 17:00 |
| 76 | 促销规则查询 | 2011-09-08 → 2011-09-08 08:00 A | 2011-09-08 → 2011-09-08 17:00 | 1d → 8h |  | baseline start none → 2011-09-08 08:00; baseline finish none → 2011-09-08 17:00 |
| 77 | **装修执行子流程** | 2011-09-01 → 2011-09-01 08:00 A | 2011-09-20 → 2011-09-20 17:00 | 13d → 14d |  | baseline start none → 2011-09-01 08:00; baseline finish none → 2011-09-20 17:00 |
| 78 | 装修执行流程 | 2011-09-01 → 2011-09-01 08:00 A | 2011-09-01 → 2011-09-01 17:00 | 1d → 8h |  | baseline start none → 2011-09-01 08:00; baseline finish none → 2011-09-01 17:00 |
| 79 | 证照表单 | 2011-09-02 → 2011-09-02 08:00 A | 2011-09-05 → 2011-09-05 17:00 | 2d → 16h |  | baseline start none → 2011-09-02 08:00; baseline finish none → 2011-09-05 17:00 |
| 80 | ADSL安装单表单 | 2011-09-06 → 2011-09-06 08:00 A | 2011-09-06 → 2011-09-06 17:00 | 1d → 8h |  | baseline start none → 2011-09-06 08:00; baseline finish none → 2011-09-06 17:00 |
| 81 | POS机移交确认单表单 | 2011-09-07 → 2011-09-07 08:00 A | 2011-09-07 → 2011-09-07 17:00 | 1d → 8h |  | baseline start none → 2011-09-07 08:00; baseline finish none → 2011-09-07 17:00 |
| 82 | 海信设备安装表单 | 2011-09-08 → 2011-09-08 08:00 A | 2011-09-08 → 2011-09-08 17:00 | 1d → 8h |  | baseline start none → 2011-09-08 08:00; baseline finish none → 2011-09-08 17:00 |
| 83 | 子公司营运部数据表单 | 2011-09-09 → 2011-09-09 08:00 A | 2011-09-13 → 2011-09-12 17:00 (-1d) | 2d → 16h | 0d → 1d | baseline start none → 2011-09-09 08:00; baseline finish none → 2011-09-12 17:00 |
| 84 | 子公司工程部表单 | 2011-09-14 → 2011-09-14 08:00 A | 2011-09-15 → 2011-09-15 17:00 | 2d → 16h |  | baseline start none → 2011-09-14 08:00; baseline finish none → 2011-09-15 17:00 |
| 85 | 运输部主数据表单 | 2011-09-16 → 2011-09-16 08:00 A | 2011-09-16 → 2011-09-16 17:00 | 1d → 8h |  | baseline start none → 2011-09-16 08:00; baseline finish none → 2011-09-16 17:00 |
| 86 | 门店主数据(财务)表单 | 2011-09-19 → 2011-09-19 08:00 A | 2011-09-19 → 2011-09-19 17:00 | 1d → 8h |  | baseline start none → 2011-09-19 08:00; baseline finish none → 2011-09-19 17:00 |
| 87 | 主数据人事表单 | 2011-09-20 → 2011-09-20 08:00 A | 2011-09-20 → 2011-09-20 17:00 | 1d → 8h |  | baseline start none → 2011-09-20 08:00; baseline finish none → 2011-09-20 17:00 |
| 88 | **门店主数据** | 2011-08-29 → 2011-08-29 08:00 A | 2011-09-14 → 2011-09-13 17:00 (-1d) |  | 0d → 1d | baseline start none → 2011-08-29 08:00; baseline finish none → 2011-09-13 17:00 |
| 89 | 门店主数据管理流程 | 2011-08-29 → 2011-08-29 08:00 A | 2011-08-30 → 2011-08-30 17:00 | 2d → 16h |  | baseline start none → 2011-08-29 08:00; baseline finish none → 2011-08-30 17:00 |
| 90 | 门店主数据新增 | 2011-09-07 → 2011-09-07 08:00 A | 2011-09-14 → 2011-09-13 17:00 (-1d) | 5d → 40h | 0d → 1d | baseline start none → 2011-09-07 08:00; baseline finish none → 2011-09-13 17:00 |
| 91 | 海信系统集成 | 2011-09-05 → 2011-09-05 08:00 A | 2011-09-06 → 2011-09-06 17:00 | 2d → 16h |  | baseline start none → 2011-09-05 08:00; baseline finish none → 2011-09-06 17:00 |
| 92 | 流程集成 | 2011-09-16 → 2011-09-16 08:00 A | 2011-09-20 → 2011-09-20 17:00 | 3d → 24h |  | baseline start none → 2011-09-16 08:00; baseline finish none → 2011-09-20 17:00 |
| 93 | **BAM** | 2011-08-31 → 2011-08-31 08:00 A | 2011-09-20 → 2011-09-20 17:00 | 14d → 15d |  | baseline start none → 2011-08-31 08:00; baseline finish none → 2011-09-20 17:00 |
| 94 | 图形化事件配置 | 2011-09-09 → 2011-09-09 08:00 A | 2011-09-15 → 2011-09-14 17:00 (-1d) | 4d → 32h | 0d → 1d | baseline start none → 2011-09-09 08:00; baseline finish none → 2011-09-14 17:00 |
| 95 | **BAM监控展示** | 2011-08-31 → 2011-08-31 08:00 A | 2011-09-20 → 2011-09-20 17:00 | 14d → 15d |  | baseline start none → 2011-08-31 08:00; baseline finish none → 2011-09-20 17:00 |
| 96 | 业务营运监控 | 2011-08-31 → 2011-08-31 08:00 A | 2011-09-02 → 2011-09-02 17:00 | 3d → 24h |  | baseline start none → 2011-08-31 08:00; baseline finish none → 2011-09-02 17:00 |
| 97 | 业务执行监控 | 2011-09-15 → 2011-09-15 08:00 A | 2011-09-19 → 2011-09-19 17:00 | 3d → 24h |  | baseline start none → 2011-09-15 08:00; baseline finish none → 2011-09-19 17:00 |
| 98 | 业务操作监控 | 2011-09-20 → 2011-09-20 08:00 A | 2011-09-20 → 2011-09-20 17:00 | 1d → 8h |  | baseline start none → 2011-09-20 08:00; baseline finish none → 2011-09-20 17:00 |

## Version 3 (saved 2011-08-31, file JH_T-BPM_20110831_开发阶段计划_V1.2.mpp)

Last finish stays 2011-09-20. Complete tasks 5 → 0.

Added:

| ID | Task | Duration | Start | Finish | Constraint | Resources |
| --- | --- | --- | --- | --- | --- | --- |
| 90 | 门店主数据管理流程优化 | 2d | 2011-09-05 | 2011-09-06 | start no earlier than 2011-09-05 | 马波 |

Changed:

| ID | Task | Start | Finish | Duration | Complete | Total float | Predecessors | Other |
| --- | --- | --- | --- | --- | --- | --- | --- | --- |
| 1 | 开发启动 | 2011-08-23 00:00 A → 2011-08-23 | 2011-08-23 00:00 → 2011-08-23 | 0h → 0d |  | 0.95d → 0d |  | constraint start no earlier than 2011-08-23 00:00 → start no earlier than 2011-08-23; baseline start 2011-08-23 08:00 → none; baseline finish 2011-08-23 08:00 → none |
| 2 | **T-BPM阶段开发** | 2011-08-23 08:00 A → 2011-08-23 | 2011-09-20 17:00 → 2011-09-20 | 21d → 20d? | 11% → 0% |  |  | baseline start 2011-08-23 08:00 → none; baseline finish 2011-09-20 17:00 → none |
| 3 | **基础开发** | 2011-08-23 08:00 A → 2011-08-23 | 2011-09-20 17:00 → 2011-09-20 | 21d → 20d? | 20% → 0% |  |  | baseline start 2011-08-23 08:00 → none; baseline finish 2011-09-20 17:00 → none |
| 4 | 组织模型 | 2011-08-23 08:00 A → 2011-08-23 | 2011-08-25 17:00 → 2011-08-25 | 24h → 3d | 50% → 0% | 0d → 17d |  | constraint start no earlier than 2011-08-22 08:00 → start no earlier than 2011-08-22; baseline start 2011-08-23 08:00 → none; baseline finish 2011-08-25 17:00 → none |
| 5 | **用户同步** | 2011-08-23 08:00 A → 2011-08-23 | 2011-08-25 17:00 A → 2011-08-25 |  | 100% → 0% | none → 0d |  | baseline start 2011-08-23 08:00 → none; baseline finish 2011-08-25 17:00 → none |
| 6 | SSO | 2011-08-23 08:00 A → 2011-08-23 | 2011-08-23 17:00 A → 2011-08-23 | 8h → 1d | 100% → 0% | none → 16d |  | constraint start no earlier than 2011-08-22 08:00 → start no earlier than 2011-08-22; resources none → 马波; baseline start 2011-08-23 08:00 → none; baseline finish 2011-08-23 17:00 → none |
| 7 | 职位,TBPM角色匹配关系维护 | 2011-08-23 08:00 A → 2011-08-23 | 2011-08-23 17:00 A → 2011-08-23 | 8h → 1d | 100% → 0% | none → 0d |  | constraint start no earlier than 2011-08-22 08:00 → start no earlier than 2011-08-22; baseline start 2011-08-23 08:00 → none; baseline finish 2011-08-23 17:00 → none |
| 8 | 用户同步 | 2011-08-24 08:00 A → 2011-08-24 | 2011-08-25 17:00 A → 2011-08-25 | 16h → 2d | 100% → 0% | none → 0d |  | baseline start 2011-08-24 08:00 → none; baseline finish 2011-08-25 17:00 → none |
| 9 | **公用组件** | 2011-08-23 08:00 A → 2011-08-23 | 2011-09-16 17:00 → 2011-09-16 | 19d → 18d? | 15% → 0% | 2d → 0d |  | baseline start 2011-08-23 08:00 → none; baseline finish 2011-09-16 17:00 → none |
| 10 | 取下一环节处理人 | 2011-08-23 08:00 A → 2011-08-23 | 2011-08-25 17:00 A → 2011-08-25 | 24h → 3d | 100% → 0% | none → 0d |  | constraint start no earlier than 2011-08-22 08:00 → start no earlier than 2011-08-22; baseline start 2011-08-23 08:00 → none; baseline finish 2011-08-25 17:00 → none |
| 11 | 授权体系 | 2011-08-26 08:00 A → 2011-08-26 | 2011-08-29 17:00 → 2011-08-29 | 16h → 2d |  |  |  | constraint start no earlier than 2011-08-22 08:00 → start no earlier than 2011-08-22; baseline start 2011-08-26 08:00 → none; baseline finish 2011-08-29 17:00 → none |
| 12 | 文件上传下载 | 2011-08-30 08:00 A → 2011-08-30 | 2011-08-31 17:00 → 2011-08-31 | 16h → 2d |  |  |  | baseline start 2011-08-30 08:00 → none; baseline finish 2011-08-31 17:00 → none |
| 13 | SAP接口封装 | 2011-09-01 08:00 A → 2011-09-01 | 2011-09-05 17:00 → 2011-09-05 | 24h → 3d |  |  |  | baseline start 2011-09-01 08:00 → none; baseline finish 2011-09-05 17:00 → none |
| 14 | 超时处理 | 2011-09-06 08:00 A → 2011-09-06 | 2011-09-08 17:00 → 2011-09-08 | 24h → 3d |  |  |  | baseline start 2011-09-06 08:00 → none; baseline finish 2011-09-08 17:00 → none |
| 15 | 菜单管理 | 2011-09-09 08:00 A → 2011-09-08 (-1d) | 2011-09-09 08:00 → 2011-09-08 (-1d) | 0h → 0d |  |  |  | baseline start 2011-09-09 08:00 → none; baseline finish 2011-09-09 08:00 → none |
| 16 | 参数配置管理 | 2011-09-09 08:00 A → 2011-09-09 | 2011-09-12 17:00 → 2011-09-13 (+1d) | 16h → 2d |  | 1d → 0d |  | constraint start no earlier than 2011-08-22 08:00 → start no earlier than 2011-08-22; baseline start 2011-09-09 08:00 → none; baseline finish 2011-09-12 17:00 → none |
| 17 | 权限委托 | 2011-09-14 08:00 A → 2011-09-14 | 2011-09-15 17:00 → 2011-09-15 | 16h → 2d? |  |  |  | constraint start no earlier than 2011-08-22 08:00 → start no earlier than 2011-08-22; baseline start 2011-09-14 08:00 → none; baseline finish 2011-09-15 17:00 → none |
| 18 | **系统日志管理** | 2011-08-23 08:00 A → 2011-08-31 (+8d) | 2011-09-16 17:00 → 2011-09-16 | 19d → 12d | 10% → 0% |  |  | baseline start 2011-08-23 08:00 → none; baseline finish 2011-09-16 17:00 → none |
| 19 | LOG记录 | 2011-08-23 08:00 A → 2011-08-31 (+8d) | 2011-08-23 17:00 → 2011-09-01 (+9d) | 8h → 2d | 20% → 0% | 1d → 6d |  | constraint start no earlier than 2011-08-22 08:00 → start no earlier than 2011-08-31; resources 江庆荣 → 张立强; baseline start 2011-08-23 08:00 → none; baseline finish 2011-08-23 17:00 → none |
| 20 | LOG管理查询界面 | 2011-09-16 08:00 A → 2011-09-16 | 2011-09-16 17:00 → 2011-09-16 | 8h → 1d |  |  |  | baseline start 2011-09-16 08:00 → none; baseline finish 2011-09-16 17:00 → none |
| 21 | INBOX定制 | 2011-08-24 08:00 A → 2011-09-02 (+9d) | 2011-08-26 17:00 → 2011-09-08 (+13d) | 24h → 5d |  | 17d → 6d | 6 → 19 | resources 马波 → 张立强; baseline start 2011-08-24 08:00 → none; baseline finish 2011-08-26 17:00 → none |
| 22 | **SAP基础数据管理** | 2011-08-26 08:00 A → 2011-08-26 | 2011-09-20 17:00 → 2011-09-20 | 18d → 17d |  |  |  | baseline start 2011-08-26 08:00 → none; baseline finish 2011-09-20 17:00 → none |
| 23 | SAP字典管理 | 2011-09-19 08:00 A → 2011-09-19 | 2011-09-20 17:00 → 2011-09-20 | 16h → 2d |  |  |  | baseline start 2011-09-19 08:00 → none; baseline finish 2011-09-20 17:00 → none |
| 24 | CACHE机制 | 2011-08-26 08:00 A → 2011-08-26 | 2011-08-26 17:00 → 2011-08-26 | 8h → 1d |  |  |  | baseline start 2011-08-26 08:00 → none; baseline finish 2011-08-26 17:00 → none |
| 25 | **系统参数初始化** | 2011-08-26 08:00 A → 2011-08-31 (+5d) | 2011-09-09 17:00 → 2011-09-14 (+5d) | 11d → 10d |  | 7d → 4d |  | baseline start 2011-08-26 08:00 → none; baseline finish 2011-09-09 17:00 → none |
| 26 | 来伊份职位,TBPM角色匹配关系初始化 | 2011-08-31 08:00 A → 2011-08-31 | 2011-09-06 17:00 → 2011-09-05 (-1d) | 40h → 4d |  | 0d → 4d | 27 → none | constraint none → start no earlier than 2011-08-31; baseline start 2011-08-31 08:00 → none; baseline finish 2011-09-06 17:00 → none |
| 27 | 业务字典信息初始化 | 2011-08-26 08:00 A → 2011-09-06 (+11d) | 2011-08-30 17:00 → 2011-09-08 (+9d) | 24h → 3d |  | 0d → 4d | 4 → 26 | resources none → 姚秋明; baseline start 2011-08-26 08:00 → none; baseline finish 2011-08-30 17:00 → none |
| 28 | 功能角色初始化 | 2011-09-07 08:00 A → 2011-09-09 (+2d) | 2011-09-09 17:00 → 2011-09-14 (+5d) | 24h → 3d |  | 7d → 4d | 26 → 27 | baseline start 2011-09-07 08:00 → none; baseline finish 2011-09-09 17:00 → none |
| 29 | **开店业务流程开发** | 2011-08-23 08:00 A → 2011-08-23 | 2011-09-20 17:00 → 2011-09-20 | 21d → 20d | 6% → 0% |  |  | baseline start 2011-08-23 08:00 → none; baseline finish 2011-09-20 17:00 → none |
| 30 | **网点年度规划** | 2011-08-23 08:00 A → 2011-08-23 | 2011-08-26 17:00 → 2011-08-26 |  | 85% → 0% | 0d → 1d |  | baseline start 2011-08-23 08:00 → none; baseline finish 2011-08-26 17:00 → none |
| 31 | 网点年度规划管理 | 2011-08-23 08:00 A → 2011-08-23 | 2011-08-25 17:00 → 2011-08-25 | 24h → 3d | 80% → 0% |  |  | constraint start no earlier than 2011-08-22 08:00 → start no earlier than 2011-08-22; baseline start 2011-08-23 08:00 → none; baseline finish 2011-08-25 17:00 → none |
| 32 | 网点年度规划汇总查询 | 2011-08-26 08:00 A → 2011-08-26 | 2011-08-26 17:00 A → 2011-08-26 | 8h → 1d | 100% → 0% | none → 1d |  | baseline start 2011-08-26 08:00 → none; baseline finish 2011-08-26 17:00 → none |
| 33 | **网点年度开发计划** | 2011-08-23 08:00 A → 2011-08-23 | 2011-08-26 17:00 → 2011-08-26 |  | 24% → 0% |  |  | baseline start 2011-08-23 08:00 → none; baseline finish 2011-08-26 17:00 → none |
| 34 | 网点开发计划流程 | 2011-08-23 08:00 A → 2011-08-23 | 2011-08-23 17:00 → 2011-08-23 | 8h → 1d | 95% → 0% |  |  | constraint start no earlier than 2011-08-22 08:00 → start no earlier than 2011-08-22; baseline start 2011-08-23 08:00 → none; baseline finish 2011-08-23 17:00 → none |
| 35 | 网点开发计划管理 | 2011-08-24 08:00 A → 2011-08-24 | 2011-08-25 17:00 → 2011-08-25 | 16h → 2d |  |  |  | constraint start no earlier than 2011-08-19 08:00 → start no earlier than 2011-08-19; baseline start 2011-08-24 08:00 → none; baseline finish 2011-08-25 17:00 → none |
| 36 | 网点开发计划查询 | 2011-08-26 08:00 A → 2011-08-26 | 2011-08-26 17:00 → 2011-08-26 | 8h → 1d |  |  |  | baseline start 2011-08-26 08:00 → none; baseline finish 2011-08-26 17:00 → none |
| 37 | **标准新店选址与发布** | 2011-08-24 08:00 A → 2011-08-23 (-1d) | 2011-09-12 17:00 → 2011-09-13 (+1d) | 14d → 15d | 6% → 0% | 1d → 0d |  | baseline start 2011-08-24 08:00 → none; baseline finish 2011-09-12 17:00 → none |
| 38 | **商超信息移交单** | 2011-08-26 08:00 A → 2011-08-26 | 2011-08-31 17:00 → 2011-09-01 (+1d) | 4d → 5d | 15% → 0% |  |  | baseline start 2011-08-26 08:00 → none; baseline finish 2011-08-31 17:00 → none |
| 39 | 商超信息移交单流程 | 2011-08-26 08:00 A → 2011-08-26 | 2011-08-26 17:00 → 2011-08-26 | 8h → 1d | 60% → 0% |  | 1SS+24h → 1SS+3d | constraint start no earlier than 2011-08-25 08:00 → start no earlier than 2011-08-25; baseline start 2011-08-26 08:00 → none; baseline finish 2011-08-26 17:00 → none |
| 40 | 商超信息移交单管理 | 2011-08-29 08:00 A → 2011-08-29 | 2011-08-30 17:00 → 2011-08-31 (+1d) | 16h → 3d |  |  |  | constraint start no earlier than 2011-08-19 08:00 → start no earlier than 2011-08-19; baseline start 2011-08-29 08:00 → none; baseline finish 2011-08-30 17:00 → none |
| 41 | 商超信息移交单查询 | 2011-08-31 08:00 A → 2011-09-01 (+1d) | 2011-08-31 17:00 → 2011-09-01 (+1d) | 8h → 1d |  |  |  | baseline start 2011-08-31 08:00 → none; baseline finish 2011-08-31 17:00 → none |
| 42 | **目标调查表** | 2011-08-24 08:00 A → 2011-08-23 (-1d) | 2011-09-05 17:00 → 2011-09-07 (+2d) | 9d → 12d | 11% → 0% |  |  | baseline start 2011-08-24 08:00 → none; baseline finish 2011-09-05 17:00 → none |
| 43 | 目标调查表流程 | 2011-08-24 08:00 A → 2011-08-23 (-1d) | 2011-08-25 17:00 → 2011-08-25 | 16h → 3d | 50% → 0% |  | 19 → 1 | baseline start 2011-08-24 08:00 → none; baseline finish 2011-08-25 17:00 → none |
| 44 | 目标调查表管理(一般店) | 2011-08-26 08:00 A → 2011-08-26 | 2011-08-31 17:00 → 2011-09-01 (+1d) | 32h → 5d |  |  |  | baseline start 2011-08-26 08:00 → none; baseline finish 2011-08-31 17:00 → none |
| 45 | 目标调查表管理(商超) | 2011-09-01 08:00 A → 2011-09-02 (+1d) | 2011-09-02 17:00 → 2011-09-06 (+4d) | 16h → 3d |  |  |  | baseline start 2011-09-01 08:00 → none; baseline finish 2011-09-02 17:00 → none |
| 46 | 目标调查表查询 | 2011-09-05 08:00 A → 2011-09-07 (+2d) | 2011-09-05 17:00 → 2011-09-07 (+2d) | 8h → 1d |  |  |  | baseline start 2011-09-05 08:00 → none; baseline finish 2011-09-05 17:00 → none |
| 47 | **合同用印** | 2011-08-29 08:00 A → 2011-08-29 | 2011-09-02 17:00 → 2011-09-02 |  |  |  |  | baseline start 2011-08-29 08:00 → none; baseline finish 2011-09-02 17:00 → none |
| 48 | 合同用印流程 | 2011-08-29 08:00 A → 2011-08-29 | 2011-08-29 17:00 → 2011-08-29 | 8h → 1d |  |  |  | baseline start 2011-08-29 08:00 → none; baseline finish 2011-08-29 17:00 → none |
| 49 | 合同用印流程表单 | 2011-08-30 08:00 A → 2011-08-30 | 2011-09-01 17:00 → 2011-09-01 | 24h → 3d |  |  |  | baseline start 2011-08-30 08:00 → none; baseline finish 2011-09-01 17:00 → none |
| 50 | 合同用印查询 | 2011-09-02 08:00 A → 2011-09-02 | 2011-09-02 17:00 → 2011-09-02 | 8h → 1d |  |  |  | baseline start 2011-09-02 08:00 → none; baseline finish 2011-09-02 17:00 → none |
| 51 | **新店信息移交** | 2011-08-29 08:00 A → 2011-08-29 | 2011-09-12 17:00 → 2011-09-13 (+1d) |  |  | 1d → 0d |  | baseline start 2011-08-29 08:00 → none; baseline finish 2011-09-12 17:00 → none |
| 52 | 新店信息移交流程 | 2011-08-29 08:00 A → 2011-08-29 | 2011-08-30 17:00 → 2011-08-30 | 16h → 2d |  |  |  | baseline start 2011-08-29 08:00 → none; baseline finish 2011-08-30 17:00 → none |
| 53 | 新店信息移交管理(一般) | 2011-08-31 08:00 A → 2011-08-31 | 2011-09-05 17:00 → 2011-09-05 | 32h → 4d |  |  |  | baseline start 2011-08-31 08:00 → none; baseline finish 2011-09-05 17:00 → none |
| 54 | 新店信息移交管理(商超) | 2011-09-06 08:00 A → 2011-09-06 | 2011-09-07 17:00 → 2011-09-07 | 16h → 2d |  |  |  | baseline start 2011-09-06 08:00 → none; baseline finish 2011-09-07 17:00 → none |
| 55 | 新店信息移交查询 | 2011-09-08 08:00 A → 2011-09-08 | 2011-09-08 17:00 → 2011-09-08 | 8h → 1d |  |  |  | baseline start 2011-09-08 08:00 → none; baseline finish 2011-09-08 17:00 → none |
| 56 | 供应商主数据新增(SAP) | 2011-09-09 08:00 A → 2011-09-09 | 2011-09-12 17:00 → 2011-09-13 (+1d) | 16h → 2d |  | 1d → 0d |  | baseline start 2011-09-09 08:00 → none; baseline finish 2011-09-12 17:00 → none |
| 57 | **标准新开店** | 2011-08-29 08:00 A → 2011-08-29 | 2011-09-20 17:00 → 2011-09-20 | 17d → 16d |  |  |  | baseline start 2011-08-29 08:00 → none; baseline finish 2011-09-20 17:00 → none |
| 58 | **装修设计** | 2011-09-05 08:00 A → 2011-09-05 | 2011-09-08 17:00 → 2011-09-08 |  |  |  |  | baseline start 2011-09-05 08:00 → none; baseline finish 2011-09-08 17:00 → none |
| 59 | 装修设计审核流程 | 2011-09-05 08:00 A → 2011-09-05 | 2011-09-05 17:00 → 2011-09-05 | 8h → 1d |  |  |  | baseline start 2011-09-05 08:00 → none; baseline finish 2011-09-05 17:00 → none |
| 60 | 装修设计查询 | 2011-09-06 08:00 A → 2011-09-06 | 2011-09-07 17:00 → 2011-09-07 | 16h → 2d |  |  |  | baseline start 2011-09-06 08:00 → none; baseline finish 2011-09-07 17:00 → none |
| 61 | 装修设计管理 | 2011-09-08 08:00 A → 2011-09-08 | 2011-09-08 17:00 → 2011-09-08 | 8h → 1d |  |  |  | baseline start 2011-09-08 08:00 → none; baseline finish 2011-09-08 17:00 → none |
| 62 | **物料配送审核** | 2011-09-14 08:00 A → 2011-09-14 | 2011-09-20 17:00 → 2011-09-20 |  |  |  |  | baseline start 2011-09-14 08:00 → none; baseline finish 2011-09-20 17:00 → none |
| 63 | 物流配送审核流程 | 2011-09-14 08:00 A → 2011-09-14 | 2011-09-14 17:00 → 2011-09-14 | 8h → 1d |  |  |  | baseline start 2011-09-14 08:00 → none; baseline finish 2011-09-14 17:00 → none |
| 64 | 物料配送查询 | 2011-09-15 08:00 A → 2011-09-15 | 2011-09-15 17:00 → 2011-09-15 | 8h → 1d |  |  |  | baseline start 2011-09-15 08:00 → none; baseline finish 2011-09-15 17:00 → none |
| 65 | 基础物料配置 | 2011-09-16 08:00 A → 2011-09-16 | 2011-09-16 17:00 → 2011-09-16 | 8h → 1d |  |  |  | baseline start 2011-09-16 08:00 → none; baseline finish 2011-09-16 17:00 → none |
| 66 | 物料配送管理 | 2011-09-19 08:00 A → 2011-09-19 | 2011-09-20 17:00 → 2011-09-20 | 16h → 2d |  |  |  | baseline start 2011-09-19 08:00 → none; baseline finish 2011-09-20 17:00 → none |
| 67 | **物料状态** | 2011-09-09 08:00 A → 2011-09-09 | 2011-09-15 17:00 → 2011-09-15 | 5d → 4d |  |  |  | baseline start 2011-09-09 08:00 → none; baseline finish 2011-09-15 17:00 → none |
| 68 | 物料状态流程 | 2011-09-09 08:00 A → 2011-09-09 | 2011-09-09 17:00 → 2011-09-09 | 8h → 1d |  | 1d → 0d |  | baseline start 2011-09-09 08:00 → none; baseline finish 2011-09-09 17:00 → none |
| 69 | 物料状态表单 | 2011-09-13 08:00 A → 2011-09-13 | 2011-09-14 17:00 → 2011-09-14 | 16h → 2d |  |  |  | baseline start 2011-09-13 08:00 → none; baseline finish 2011-09-14 17:00 → none |
| 70 | 物料状态查询 | 2011-09-15 08:00 A → 2011-09-15 | 2011-09-15 17:00 → 2011-09-15 | 8h → 1d |  |  |  | baseline start 2011-09-15 08:00 → none; baseline finish 2011-09-15 17:00 → none |

| ID | Task | Start | Finish | Duration | Total float | Predecessors | Other |
| --- | --- | --- | --- | --- | --- | --- | --- |
| 71 | **商品预置键** | 2011-09-16 08:00 A → 2011-09-16 | 2011-09-20 17:00 → 2011-09-20 |  |  |  | baseline start 2011-09-16 08:00 → none; baseline finish 2011-09-20 17:00 → none |
| 72 | 商品预置键表单&流程 | 2011-09-16 08:00 A → 2011-09-16 | 2011-09-19 17:00 → 2011-09-19 | 16h → 2d |  |  | baseline start 2011-09-16 08:00 → none; baseline finish 2011-09-19 17:00 → none |
| 73 | 商品预置键查询 | 2011-09-20 08:00 A → 2011-09-20 | 2011-09-20 17:00 → 2011-09-20 | 8h → 1d |  |  | baseline start 2011-09-20 08:00 → none; baseline finish 2011-09-20 17:00 → none |
| 74 | **促销规则** | 2011-09-06 08:00 A → 2011-08-30 (-7d) | 2011-09-08 17:00 → 2011-09-01 (-7d) |  | 0d → 1d |  | baseline start 2011-09-06 08:00 → none; baseline finish 2011-09-08 17:00 → none |
| 75 | 促销规则管理 | 2011-09-06 08:00 A → 2011-08-30 (-7d) | 2011-09-07 17:00 → 2011-08-31 (-7d) | 16h → 2d | 0d → 1d | 46 → 89 | resources 江庆荣 → 王志强; baseline start 2011-09-06 08:00 → none; baseline finish 2011-09-07 17:00 → none |
| 76 | 促销规则查询 | 2011-09-08 08:00 A → 2011-09-01 (-7d) | 2011-09-08 17:00 → 2011-09-01 (-7d) | 8h → 1d | 0d → 1d |  | resources 江庆荣 → 王志强; baseline start 2011-09-08 08:00 → none; baseline finish 2011-09-08 17:00 → none |
| 77 | **装修执行子流程** | 2011-09-01 08:00 A → 2011-09-02 (+1d) | 2011-09-20 17:00 → 2011-09-20 | 14d → 12d |  |  | baseline start 2011-09-01 08:00 → none; baseline finish 2011-09-20 17:00 → none |
| 78 | 装修执行流程 | 2011-09-01 08:00 A → 2011-09-02 (+1d) | 2011-09-01 17:00 → 2011-09-02 (+1d) | 8h → 1d |  |  | baseline start 2011-09-01 08:00 → none; baseline finish 2011-09-01 17:00 → none |
| 79 | 证照表单 | 2011-09-02 08:00 A → 2011-09-05 (+3d) | 2011-09-05 17:00 → 2011-09-06 (+1d) | 16h → 2d |  |  | baseline start 2011-09-02 08:00 → none; baseline finish 2011-09-05 17:00 → none |
| 80 | ADSL安装单表单 | 2011-09-06 08:00 A → 2011-09-07 (+1d) | 2011-09-06 17:00 → 2011-09-07 (+1d) | 8h → 1d |  |  | baseline start 2011-09-06 08:00 → none; baseline finish 2011-09-06 17:00 → none |
| 81 | POS机移交确认单表单 | 2011-09-07 08:00 A → 2011-09-08 (+1d) | 2011-09-07 17:00 → 2011-09-08 (+1d) | 8h → 1d |  |  | baseline start 2011-09-07 08:00 → none; baseline finish 2011-09-07 17:00 → none |
| 82 | 海信设备安装表单 | 2011-09-08 08:00 A → 2011-09-09 (+1d) | 2011-09-08 17:00 → 2011-09-09 (+1d) | 8h → 1d |  |  | baseline start 2011-09-08 08:00 → none; baseline finish 2011-09-08 17:00 → none |
| 83 | 子公司营运部数据表单 | 2011-09-09 08:00 A → 2011-09-13 (+4d) | 2011-09-12 17:00 → 2011-09-14 (+2d) | 16h → 2d | 1d → 0d |  | baseline start 2011-09-09 08:00 → none; baseline finish 2011-09-12 17:00 → none |
| 84 | 子公司工程部表单 | 2011-09-14 08:00 A → 2011-09-15 (+1d) | 2011-09-15 17:00 → 2011-09-15 | 16h → 1d |  |  | baseline start 2011-09-14 08:00 → none; baseline finish 2011-09-15 17:00 → none |
| 85 | 运输部主数据表单 | 2011-09-16 08:00 A → 2011-09-16 | 2011-09-16 17:00 → 2011-09-16 | 8h → 1d |  |  | baseline start 2011-09-16 08:00 → none; baseline finish 2011-09-16 17:00 → none |
| 86 | 门店主数据(财务)表单 | 2011-09-19 08:00 A → 2011-09-19 | 2011-09-19 17:00 → 2011-09-19 | 8h → 1d |  |  | baseline start 2011-09-19 08:00 → none; baseline finish 2011-09-19 17:00 → none |
| 87 | 主数据人事表单 | 2011-09-20 08:00 A → 2011-09-20 | 2011-09-20 17:00 → 2011-09-20 | 8h → 1d |  |  | baseline start 2011-09-20 08:00 → none; baseline finish 2011-09-20 17:00 → none |
| 88 | **门店主数据** | 2011-08-29 08:00 A → 2011-08-29 | 2011-09-13 17:00 → 2011-09-14 (+1d) |  |  |  | baseline start 2011-08-29 08:00 → none; baseline finish 2011-09-13 17:00 → none |
| 89 | 门店主数据管理流程 | 2011-08-29 08:00 A → 2011-08-29 | 2011-08-30 17:00 → 2011-08-29 (-1d) | 16h → 1d | 0d → 1d |  | baseline start 2011-08-29 08:00 → none; baseline finish 2011-08-30 17:00 → none |
| 91 | 门店主数据新增 | 2011-09-07 08:00 A → 2011-09-07 | 2011-09-13 17:00 → 2011-09-14 (+1d) | 40h → 5d |  | 92 → 97 | baseline start 2011-09-07 08:00 → none; baseline finish 2011-09-13 17:00 → none |
| 92 | 海信系统集成 | 2011-09-05 08:00 A → 2011-09-09 (+4d) | 2011-09-06 17:00 → 2011-09-13 (+7d) | 16h → 2d | 0d → 5d | 98 → none | constraint none → start no earlier than 2011-09-09; resources 王志强 → 马波; baseline start 2011-09-05 08:00 → none; baseline finish 2011-09-06 17:00 → none |
| 93 | 流程集成 | 2011-09-16 08:00 A → 2011-09-15 (-1d) | 2011-09-20 17:00 → 2011-09-20 | 24h → 4d |  |  | baseline start 2011-09-16 08:00 → none; baseline finish 2011-09-20 17:00 → none |
| 94 | **BAM** | 2011-08-31 08:00 A → 2011-09-02 (+2d) | 2011-09-20 17:00 → 2011-09-19 (-1d) | 15d → 11d | 0d → 1d |  | baseline start 2011-08-31 08:00 → none; baseline finish 2011-09-20 17:00 → none |
| 95 | 图形化事件配置 | 2011-09-09 08:00 A → 2011-09-08 (-1d) | 2011-09-14 17:00 → 2011-09-14 | 32h → 4d | 1d → 0d | 76 → 46 | baseline start 2011-09-09 08:00 → none; baseline finish 2011-09-14 17:00 → none |
| 96 | **BAM监控展示** | 2011-08-31 08:00 A → 2011-09-02 (+2d) | 2011-09-20 17:00 → 2011-09-19 (-1d) | 15d → 11d | 0d → 1d |  | baseline start 2011-08-31 08:00 → none; baseline finish 2011-09-20 17:00 → none |
| 97 | 业务执行监控 | 2011-09-15 08:00 A → 2011-09-02 (-13d) | 2011-09-19 17:00 → 2011-09-06 (-13d) | 24h → 3d | 0d → 1d | 91 → 76 | baseline start 2011-09-15 08:00 → none; baseline finish 2011-09-19 17:00 → none |
| 98 | 业务营运监控 | 2011-08-31 08:00 A → 2011-09-15 (+15d) | 2011-09-02 17:00 → 2011-09-19 (+17d) | 24h → 3d | 0d → 1d | 89 → 91 | baseline start 2011-08-31 08:00 → none; baseline finish 2011-09-02 17:00 → none |
| 99 | 业务操作监控 | 2011-09-20 08:00 A → 2011-09-09 (-11d) | 2011-09-20 17:00 → 2011-09-09 (-11d) | 8h → 1d | 0d → 6d | 97 → 21 | resources 王志强 → 张立强; baseline start 2011-09-20 08:00 → none; baseline finish 2011-09-20 17:00 → none |
