# sss

How a schedule from MS Project changed from version to version. A marks actual dates.

## Version 1 (saved 2011-12-22, file JH_T-BPM_20111221_促销开发阶段计划_V1.0.mpp)

| ID | WBS | Task | Duration | Start | Finish | Predecessors | Total float | Constraint |
| --- | --- | --- | --- | --- | --- | --- | --- | --- |
| 1 |  | 开发执行 | 0d | 2011-12-26 | 2011-12-26 |  | 0d | start no earlier than 2011-12-26 |
| 2 | 2 | **促销开发计划** | 42d | 2011-12-26 | 2012-03-02 |  | 0d |  |
| 3 | 2.1 | **基础模块开发** | 6d | 2011-12-26 | 2012-01-03 |  | 36d |  |
| 4 |  | 环节超时设计开发 | 3d | 2011-12-26 | 2011-12-28 | 1 | 1d |  |
| 5 |  | 环节处理人优化 | 3d | 2011-12-29 | 2012-01-03 | 4 | 1d |  |
| 6 | 2.2 | **流程开发** | 20d | 2011-12-26 | 2012-02-01 | 1 | 0d |  |
| 7 |  | 促销商品制定流程 | 9d | 2011-12-26 | 2012-01-10 | 1 | 1d |  |
| 8 |  | 促销商品信息发布 | 4d | 2012-01-03 | 2012-01-10 | 25 | 5d |  |
| 9 |  | 活动赠品申购 | 5d | 2011-12-26 | 2011-12-30 | 1 | 7d |  |
| 10 |  | 促销活动培训课件制作 | 2d | 2011-12-26 | 2011-12-27 |  | 2d |  |
| 11 |  | 物资需求配置表(总部) | 2d | 2011-12-28 | 2011-12-29 | 10 | 2d |  |
| 12 |  | 物资需求配置表(子公司) | 2d | 2011-12-30 | 2012-01-03 | 11 | 2d |  |
| 13 |  | 物料状态主数据 | 3d | 2011-12-26 | 2011-12-28 | 1 | 7d |  |
| 14 |  | 活动赠品订购入库及配送 | 4d | 2012-01-06 | 2012-01-11 | 12 | 2d |  |
| 15 |  | 促销活动执行 | 4d | 2012-01-03 | 2012-01-10 | 9 | 7d |  |
| 16 |  | 标准促销收尾 | 4d | 2012-01-12 | 2012-01-17 | 14 | 2d |  |
| 17 |  | 促销主数据（特殊促销） | 3d | 2012-01-11 | 2012-01-13 | 7 | 1d |  |
| 18 |  | 促销主数据（会员价） | 3d | 2012-01-06 | 2012-01-10 | 22 | 0d |  |
| 19 |  | 商品或主题或热点或异业促销活动（总部） | 4d | 2012-01-11 | 2012-01-16 | 18 | 0d |  |
| 20 |  | 商品或主题或热点或异业促销活动（子公司） | 2d | 2012-01-17 | 2012-01-18 | 19 | 0d |  |
| 21 |  | 库存及竞品活动规划（总部） | 4d | 2011-12-26 | 2011-12-29 | 1 | 0d |  |
| 22 |  | 库存及竞品活动规划（子公司） | 2d | 2011-12-30 | 2012-01-03 | 21 | 0d |  |
| 23 |  | 新品推广活动规划（总部） | 4d | 2011-12-29 | 2012-01-06 | 13 | 7d |  |
| 24 |  | 新品推广活动规划（子公司） | 2d | 2012-01-09 | 2012-01-10 | 23 | 7d |  |
| 25 |  | 全年活动规划 | 5d | 2011-12-26 | 2011-12-30 | 1 | 5d |  |
| 26 |  | 活动赠品设计打样封样 | 2d | 2012-01-11 | 2012-01-12 | 8 | 5d |  |
| 27 |  | SAP 接口集成 | 3d | 2012-01-16 | 2012-01-18 | 17 | 1d |  |
| 28 |  | 主线流程集成 | 5d | 2012-01-19 | 2012-02-01 | 20, 19 | 0d |  |
| 29 |  | 流程重构 | 7d | 2012-02-02 | 2012-02-10 | 6 | 0d |  |
| 30 | 2.4 | **业务信息管理及查询** | 15d | 2012-02-13 | 2012-03-02 | 29 | 0d |  |
| 31 |  | 管理页面定义及开发 | 5d | 2012-02-13 | 2012-02-17 |  | 0d |  |
| 32 |  | 查询统计页面查询 | 5d | 2012-02-20 | 2012-02-24 | 31 | 0d |  |
| 33 |  | 促销业务仪表板 | 5d | 2012-02-27 | 2012-03-02 | 32 | 0d |  |

## Version 2 (saved 2011-12-29, file JH_T-BPM_20111229_促销开发阶段计划_V1.1.mpp)

Last finish 2012-03-02 → 2012-02-28 (-3d). Complete tasks 0 → 1.

Removed: 12 物资需求配置表(子公司); 20 商品或主题或热点或异业促销活动（子公司）

Changed:

| ID | Task | Start | Finish | Duration | Complete | Total float | Predecessors | Other |
| --- | --- | --- | --- | --- | --- | --- | --- | --- |
| 2 | **促销开发计划** | 2011-12-26 A | 2012-03-02 → 2012-02-28 (-3d) | 42d → 39d | 0% → 16% |  |  |  |
| 3 | **基础模块开发** | 2011-12-26 → 2012-01-06 (+11d) | 2012-01-03 → 2012-01-13 (+10d) |  |  | 36d → 0d |  |  |
| 4 | 环节超时设计开发 | 2011-12-26 → 2012-01-06 (+11d) | 2011-12-28 → 2012-01-10 (+13d) |  |  | 1d → 0d | 1 → 19 | resources SE03 → 徐新宇 |
| 5 | 环节处理人优化 | 2011-12-29 → 2012-01-11 (+13d) | 2012-01-03 → 2012-01-13 (+10d) |  |  | 1d → 0d |  | resources SE03 → 徐新宇 |
| 6 | **流程开发** | 2011-12-26 A | 2012-02-01 → 2012-01-20 (-12d) | 20d → 17d | 0% → 22% |  |  | resources PM [50%]; TM → 戴鲲 [50%]; 马波 |
| 7 | 促销商品制定流程 | 2011-12-26 A |  |  | 0% → 30% | 1d → 2d |  | resources SA → 王志强 |
| 8 | 促销商品信息发布 | 2012-01-03 → 2011-12-26 A (-8d) | 2012-01-10 → 2011-12-29 A (-12d) |  | 0% → 100% | 5d → none | 25 → 1 | resources SE04 → 侯钢 |
| 9 | 活动赠品申购 | 2011-12-26 → 2011-12-30 A (+4d) | 2011-12-30 → 2012-01-17 (+18d) |  | 0% → 10% | 7d → 1.5d | 1 → 14 | resources SE01 → 侯钢 |
| 10 | 促销活动培训课件制作 | 2011-12-26 A |  |  | 0% → 95% | 2d → 3.5d | none → 1 | resources SE02 → 江庆荣 |
| 11 | 物资需求配置表(总部+子公司) | 2011-12-28 A | 2011-12-29 → 2012-01-06 (+8d) | 2d → 5d | 0% → 70% |  |  | was named 物资需求配置表(总部); resources SE02 → 江庆荣 |
| 13 | 活动赠品订购入库及配送 | 2012-01-06 → 2012-01-09 (+3d) | 2012-01-11 → 2012-01-12 (+1d) |  |  |  | 物资需求配置表(子公司) → 11 | resources SE02 → 江庆荣 |
| 14 | 促销活动执行 | 2012-01-03 → 2011-12-30 A (-4d) |  | 4d → 5d | 0% → 20% | 7d → 1.5d | 9 → 8 | resources SE01 → 侯钢 |
| 15 | 标准促销收尾 | 2012-01-12 → 2012-01-13 (+1d) | 2012-01-17 → 2012-01-18 (+1d) |  |  |  |  | resources SE02 → 江庆荣 |
| 17 | 促销主数据（特殊促销） |  |  |  |  |  |  | resources SA → 王志强 |
| 18 | 促销主数据（会员价） |  |  |  |  | 0d → 6d |  | resources LYF02 → 杜兰 |
| 19 | 商品或主题或热点或异业促销活动（总部+子公司） | 2012-01-11 → 2011-12-26 A (-16d) | 2012-01-16 → 2012-01-03 (-13d) | 4d → 6d | 0% → 66% |  | 18 → 1 | was named 商品或主题或热点或异业促销活动（总部）; resources LYF02 → 徐新宇 |
| 21 | 库存及竞品活动规划（总部） | 2011-12-26 A |  |  |  | 0d → 6d |  | resources LYF02 → 杜兰 |
| 22 | 库存及竞品活动规划（子公司） |  |  |  |  | 0d → 6d |  | resources LYF02 → 杜兰 |
| 23 | 新品推广活动规划（总部） |  |  |  |  | 7d → 6d |  | resources LYF01 → 牟忠海 |
| 24 | 新品推广活动规划（子公司） |  |  |  |  | 7d → 6d |  | resources LYF01 → 牟忠海 |
| 25 | 全年活动规划 |  |  |  |  | 5d → 10d |  | resources SE04 → 王遐 |
| 26 | 活动赠品设计打样封样 | 2012-01-11 → 2012-01-17 (+6d) | 2012-01-12 → 2012-01-19 (+7d) |  |  | 5d → 1.5d | 8 → 9 | resources SE04 → 侯钢 |
| 27 | 主线流程集成 | 2012-01-19 → 2012-01-16 (-3d) | 2012-02-01 → 2012-01-20 (-12d) |  |  |  | 商品或主题或热点或异业促销活动（子公司）, 19 → 5 | resources SE03; LYF02 → 徐新宇; 杜兰 |
| 28 | **业务信息管理及查询** | 2012-02-13 → 2012-02-08 (-5d) | 2012-03-02 → 2012-02-28 (-3d) |  |  |  |  |  |
| 29 | 管理页面定义及开发 | 2012-02-13 → 2012-02-08 (-5d) | 2012-02-17 → 2012-02-14 (-3d) |  |  |  |  | resources SA; SE01; SE02; SE03; SE04; LYF01; LYF02 → 王志强; 侯钢; 江庆荣; 徐新宇; 王遐; 牟忠海; 杜兰 |
| 30 | 查询统计页面查询 | 2012-02-20 → 2012-02-15 (-5d) | 2012-02-24 → 2012-02-21 (-3d) |  |  |  |  | resources SA; SE01; SE02; SE03; SE04; LYF01; LYF02 → 王志强; 侯钢; 江庆荣; 徐新宇; 王遐; 牟忠海; 杜兰 |
| 32 | 促销业务仪表板 | 2012-02-27 → 2012-02-22 (-5d) | 2012-03-02 → 2012-02-28 (-3d) |  |  |  |  | resources SA; SE03; SE01; LYF01 → 王志强; 徐新宇; 侯钢; 牟忠海 |
| 33 | 物料状态主数据 |  |  |  |  | 7d → 6d |  | resources LYF01 → 牟忠海 |
| 34 | SAP 接口集成 |  |  |  |  |  |  | resources SA; LYF01 → 王志强; 牟忠海 |
| 35 | 流程重构 | 2012-02-02 → 2012-01-30 (-3d) | 2012-02-10 → 2012-02-07 (-3d) |  |  |  |  | resources SA; SE01; SE02; SE03; SE04; LYF01; LYF02 → 王志强; 侯钢; 江庆荣; 徐新宇; 王遐; 牟忠海; 杜兰 |

## Version 3 (saved 2012-01-12, file JH_T-BPM_20120112_促销开发阶段计划_V1.2.mpp)

Last finish 2012-02-28 → 2012-02-24 (-4d). Complete tasks 1 → 14.

Changed:

| ID | Task | Start | Finish | Duration | Complete | Total float | Predecessors | Other |
| --- | --- | --- | --- | --- | --- | --- | --- | --- |
| 2 | **促销开发计划** |  | 2012-02-28 → 2012-02-24 (-4d) | 39d → 37d | 16% → 57% |  |  |  |
| 3 | **基础模块开发** | 2012-01-06 A | 2012-01-13 A |  | 0% → 100% | 0d → none |  |  |
| 4 | 环节超时设计开发 | 2012-01-06 A | 2012-01-10 A |  | 0% → 100% | 0d → none |  |  |
| 5 | 环节处理人优化 | 2012-01-11 A | 2012-01-13 A |  | 0% → 100% | 0d → none |  |  |
| 6 | **流程开发** |  |  |  | 22% → 68% |  |  |  |
| 9 | 活动赠品申购 |  | 2012-01-17 A |  | 10% → 100% | 1.5d → none |  |  |
| 10 | 促销活动培训课件制作 |  | 2011-12-27 A |  | 95% → 100% | 3.5d → none |  |  |
| 11 | 物资需求配置表(总部+子公司) |  | 2012-01-06 A |  | 70% → 100% | 2d → none |  |  |
| 13 | 活动赠品订购入库及配送 | 2012-01-09 A |  |  | 0% → 60% |  |  |  |
| 14 | 促销活动执行 |  | 2012-01-10 A |  | 20% → 100% | 1.5d → none |  |  |
| 17 | 促销主数据（特殊促销） | 2012-01-11 A |  |  | 0% → 80% | 1d → 2.15d |  |  |
| 18 | 非常规采购询价 | 2012-01-06 A | 2012-01-10 A |  | 0% → 100% | 6d → none |  | was named 促销主数据（会员价） |
| 19 | 商品或主题或热点或异业促销活动（总部+子公司） |  | 2012-01-03 A |  | 66% → 100% | 0d → none |  |  |
| 21 | 库存及竞品活动规划（总部） |  | 2011-12-29 A |  | 0% → 100% | 6d → none |  |  |
| 22 | 库存及竞品活动规划（子公司） | 2011-12-30 A | 2012-01-03 A |  | 0% → 100% | 6d → none |  |  |
| 23 | 新品推广活动规划（总部） | 2011-12-29 A | 2012-01-06 A |  | 0% → 100% | 6d → none |  |  |
| 24 | 新品推广活动规划（子公司） | 2012-01-09 A | 2012-01-10 A |  | 0% → 100% | 6d → none |  |  |
| 25 | 全年活动规划 | 2011-12-26 A |  |  | 0% → 25% | 10d → 12d |  |  |
| 26 | 物料状态主数据 | 2011-12-26 A |  |  | 0% → 30% | 6d → 14d |  |  |
| 27 | 活动赠品设计打样封样 | 2012-01-17 A | 2012-01-19 A |  | 0% → 100% | 1.5d → none |  |  |
| 28 | SAP 接口集成 | 2012-01-16 A |  |  | 0% → 5% | 1d → 2d |  |  |
| 29 | 主线流程集成 | 2012-01-16 A |  |  | 0% → 10% |  |  |  |
| 30 | 流程重构 |  | 2012-02-07 → 2012-02-03 (-4d) | 7d → 5d |  |  |  | resources 王志强; 侯钢; 江庆荣; 徐新宇; 王遐; 牟忠海; 杜兰 → 王志强; 侯钢; 江庆荣; 徐新宇; 杜兰 |
| 31 | **业务信息管理及查询** | 2012-02-08 → 2012-02-06 (-2d) | 2012-02-28 → 2012-02-24 (-4d) |  |  |  | 30 → none |  |
| 32 | 管理页面定义及开发 | 2012-02-08 → 2012-02-06 (-2d) | 2012-02-14 → 2012-02-10 (-4d) |  |  |  | none → 30 |  |
| 33 | 查询统计页面查询 | 2012-02-15 → 2012-02-13 (-2d) | 2012-02-21 → 2012-02-17 (-4d) |  |  |  |  |  |
| 35 | 促销业务仪表板 | 2012-02-22 → 2012-02-20 (-2d) | 2012-02-28 → 2012-02-24 (-4d) |  |  |  |  | resources 王志强; 徐新宇; 侯钢; 牟忠海 → 王志强; 徐新宇; 侯钢 |
